# 嵌入式大赛开发阶段可执行计划

Schedule from MS Project XML, 2026-05-04 to 2026-07-20.
ChatGPT

## Resources

| Resource |
| --- |
| 曹鸿治 |
| 戎择辰 |
| 戴鹏林 |

## Schedule

| ID | WBS | Task | Duration | Start | Finish | Predecessors | Resources | Work |
| --- | --- | --- | --- | --- | --- | --- | --- | --- |
| 1 | 1 | **1. 现有硬件可立即开展：RDK、STM32、摄像头、项目框架** | 7d | 2026-05-04 | 2026-05-10 |  |  | 56h |
| 2 | 1.1 | 建立代码仓库、目录结构与每日记录模板 | 2d | 2026-05-04 | 2026-05-05 |  | 戎择辰 [50%]; 曹鸿治 [50%] | 16h |
| 3 | 1.2 | RDK X5刷机/系统启动/SSH/网络配置 | 3d | 2026-05-04 | 2026-05-06 |  | 戎择辰 [80%]; 曹鸿治 [20%] | 24h |
| 4 | 1.3 | RDK Camera采集Demo：拍照、录像、保存样张 | 3d | 2026-05-06 | 2026-05-08 |  | 戎择辰 [70%]; 曹鸿治 [30%] | 24h |
| 5 | 1.4 | STM32工程模板、串口回显与LED心跳 | 4d | 2026-05-04 | 2026-05-07 |  | 戴鹏林 [80%]; 曹鸿治 [20%] | 32h |
| 6 | 1.5 | STM32 PWM/定时器/编码器接口空载程序 | 3d | 2026-05-07 | 2026-05-11 |  | 戴鹏林 [80%]; 曹鸿治 [20%] | 24h |
| 7 | 1.6 | RDK-STM32 UART通信协议草案 | 2d | 2026-05-07 | 2026-05-08 |  | 戎择辰 [40%]; 戴鹏林 [40%]; 曹鸿治 [20%] | 16h |
| 8 | 1.7 | 采购下单表与到货检查清单 | 3d | 2026-05-05 | 2026-05-07 |  | 曹鸿治 [70%]; 戴鹏林 [20%]; 戎择辰 [10%] | 24h |
| 9 | 2 | **2. 等待底盘/电机/驱动到货期间：软件模拟与离线开发** | 14d | 2026-05-11 | 2026-05-24 |  |  | 112h |
| 10 | 2.1 | RDK端串口模拟器：模拟STM32回传里程计/急停/电池 | 4d | 2026-05-11 | 2026-05-14 | 7 | 戎择辰 [70%]; 戴鹏林 [30%] | 32h |
| 11 | 2.2 | STM32命令解析与状态回传程序 | 5d | 2026-05-11 | 2026-05-15 |  | 戴鹏林 [70%]; 戎择辰 [30%] | 40h |
| 12 | 2.3 | 底盘运动学与/cmd_vel到四轮速度计算 | 4d | 2026-05-13 | 2026-05-18 |  | 戴鹏林 [60%]; 戎择辰 [40%] | 32h |
| 13 | 2.4 | 视觉识别最小方案：拍照数据、标签类别、规则阈值 | 4d | 2026-05-12 | 2026-05-15 |  | 戎择辰 [60%]; 曹鸿治 [40%] | 32h |
| 14 | 2.5 | 固定监控输入替代方案：先用本地视频/图片模拟告警 | 3d | 2026-05-15 | 2026-05-19 |  | 戎择辰 [70%]; 曹鸿治 [30%] | 24h |
| 15 | 2.6 | 非专业接线记录模板：表格+照片标注规则 | 3d | 2026-05-13 | 2026-05-15 |  | 曹鸿治 [60%]; 戴鹏林 [20%]; 戎择辰 [20%] | 24h |
| 16 | 2.7 | AI生成技术文档骨架，人工只填真实进度 | 3d | 2026-05-16 | 2026-05-19 |  | 曹鸿治 [40%]; 戎择辰 [30%]; 戴鹏林 [30%] | 24h |
| 17 | 2.8 | 每周一次远程/桌面级联调：RDK模拟器 ↔ STM32真板 | 3d | 2026-05-20 | 2026-05-22 |  | 曹鸿治 [30%]; 戎择辰 [35%]; 戴鹏林 [35%] | 24h |
| 18 | 3 | **3. 硬件陆续到货后：底盘、电源、电机驱动人工集成** | 14d | 2026-05-25 | 2026-06-07 |  |  | 112h |
| 19 | 3.1 | 底盘、电机、麦轮、驱动板到货验收与拍照编号 | 2d | 2026-05-25 | 2026-05-26 |  | 曹鸿治 [60%]; 戴鹏林 [30%]; 戎择辰 [10%] | 16h |
| 20 | 3.2 | 临时台架搭建：先不装整车，单电机安全测试 | 3d | 2026-05-26 | 2026-05-28 |  | 曹鸿治 [50%]; 戴鹏林 [50%] | 24h |
| 21 | 3.3 | 三路供电接线：12V电机、5V RDK、6V舵机预留 | 3d | 2026-05-28 | 2026-06-01 |  | 曹鸿治 [60%]; 戴鹏林 [40%] | 24h |
| 22 | 3.4 | MDDS20单电机PWM/DIR测试 | 3d | 2026-05-29 | 2026-06-02 |  | 戴鹏林 [70%]; 曹鸿治 [30%] | 24h |
| 23 | 3.5 | 四轮安装与方向编号 LF/RF/LR/RR | 3d | 2026-06-01 | 2026-06-03 |  | 曹鸿治 [55%]; 戴鹏林 [45%] | 24h |
| 24 | 3.6 | RDK发送速度命令，STM32驱动四轮空载转动 | 3d | 2026-06-03 | 2026-06-05 |  | 戎择辰 [40%]; 戴鹏林 [50%]; 曹鸿治 [10%] | 24h |
| 25 | 3.7 | 键盘遥控底盘低速移动与急停验证 | 2d | 2026-06-05 | 2026-06-08 |  | 戎择辰 [35%]; 戴鹏林 [45%]; 曹鸿治 [20%] | 16h |

Notes:
- 1: 【任务类型】阶段 / 【AI可以做】无 / 【人工必须做】无 / 【交付物】阶段汇总
- 2: 【任务类型】AI辅助+人工确认 / 【AI可以做】生成README、目录建议、日志模板初稿 / 【人工必须做】三人确认命名规则；曹鸿治每天补实物照片和问题记录 / 【交付物】Git仓库、README、每日记录表
- 3: 【任务类型】人工为主 / 【AI可以做】给出命令排错建议 / 【人工必须做】实际插卡、联网、SSH登录、拍照留证 / 【交付物】RDK可远程登录
- 4: 【任务类型】AI辅助+人工采集 / 【AI可以做】生成Python/OpenCV采集脚本 / 【人工必须做】连接摄像头、采集实验桌样张、记录曝光和视角问题 / 【交付物】camera_demo.py与样张文件夹
- 5: 【任务类型】人工为主 / 【AI可以做】生成HAL/LL工程结构和串口回显代码参考 / 【人工必须做】实际烧录、串口助手验证、记录板卡引脚 / 【交付物】STM32基础工程可运行
- 6: 【任务类型】人工为主 / 【AI可以做】解释定时器配置与占空比计算 / 【人工必须做】用LED/万用表/逻辑分析工具验证PWM输出 / 【交付物】pwm_test与encoder_stub
- 7: 【任务类型】AI适合做初稿 / 【AI可以做】生成帧格式、校验、字段说明和异常码 / 【人工必须做】人工决定最终字段；两端各自实现并实际收发验证 / 【交付物】protocol_v1.md
- 8: 【任务类型】AI辅助整理 / 【AI可以做】把硬件清单改成下单表和验收项 / 【人工必须做】人工确认商品型号、价格、物流、替代件 / 【交付物】purchase_checklist.csv
- 9: 【任务类型】阶段 / 【AI可以做】无 / 【人工必须做】无 / 【交付物】阶段汇总
- 10: 【任务类型】AI辅助编码 / 【AI可以做】生成Python串口模拟器框架 / 【人工必须做】人工按协议测试边界情况，保证后续可替换成真STM32 / 【交付物】serial_simulator.py
- 11: 【任务类型】AI辅助编码 / 【AI可以做】生成解析状态机和CRC参考代码 / 【人工必须做】人工烧录、串口互测、处理异常帧 / 【交付物】stm32_protocol_v1
- 12: 【任务类型】AI辅助推导 / 【AI可以做】推导麦轮速度公式和测试用例 / 【人工必须做】人工核对轮子方向和坐标系，后续实车校正 / 【交付物】mecanum_kinematics.md/代码
- 13: 【任务类型】AI辅助标注规范 / 【AI可以做】生成标签类别、数据目录、拍摄角度建议 / 【人工必须做】人工拍摄真实实验桌样张，筛掉模糊/无效数据 / 【交付物】dataset_plan与首批样张
- 14: 【任务类型】AI辅助编码 / 【AI可以做】生成从图片/视频产生告警事件的脚本 / 【人工必须做】人工准备模拟异常素材和工位编号 / 【交付物】camera_alarm_mock.py
- 15: 【任务类型】AI适合做模板 / 【AI可以做】生成接线表、线号规则、照片标注模板 / 【人工必须做】人工按实物逐项填写，不追求专业原理图 / 【交付物】wiring_log_template.xlsx/csv
- 16: 【任务类型】AI适合做初稿 / 【AI可以做】生成章节、图表清单、实验记录格式 / 【人工必须做】三人只填写真实结果、照片、参数，避免虚构 / 【交付物】tech_doc_outline.md
- 17: 【任务类型】人工为主 / 【AI可以做】提供排错清单 / 【人工必须做】实际连线、共地检查、串口互发、截图留证 / 【交付物】联调记录第1版
- 18: 【任务类型】阶段 / 【AI可以做】无 / 【人工必须做】无 / 【交付物】阶段汇总
- 19: 【任务类型】人工为主 / 【AI可以做】生成验收表字段 / 【人工必须做】人工核对数量、孔位、线序、电机参数并拍照 / 【交付物】到货验收记录
- 20: 【任务类型】人工为主 / 【AI可以做】给出安全检查清单 / 【人工必须做】人工固定电机、防短路、限流上电 / 【交付物】单电机测试台架
- 21: 【任务类型】人工必须做 / 【AI可以做】生成上电前检查表 / 【人工必须做】实际接线、万用表测电压、共地检查、拍照标注 / 【交付物】power_wiring_log
- 22: 【任务类型】人工为主 / 【AI可以做】提供测试步骤和故障判断 / 【人工必须做】人工接驱动、测方向、调PWM频率和占空比 / 【交付物】单电机正反转可控
- 23: 【任务类型】人工必须做 / 【AI可以做】生成轮子编号图示 / 【人工必须做】人工安装、贴标签、确认左右前后方向 / 【交付物】底盘四轮编号完成
- 24: 【任务类型】人工联调 / 【AI可以做】辅助排查串口/协议/方向问题 / 【人工必须做】实际联调，不合格就修改协议和方向参数 / 【交付物】cmd_vel到四轮转动闭环
- 25: 【任务类型】人工为主 / 【AI可以做】生成键盘控制节点 / 【人工必须做】现场低速测试、急停按钮实际验证 / 【交付物】底盘可控移动视频

| ID | WBS | Task | Duration | Start | Finish | Resources | Work |
| --- | --- | --- | --- | --- | --- | --- | --- |
| 26 | 4 | **4. 核心演示闭环：先可演示，再逐步增强** | 14d | 2026-06-08 | 2026-06-21 |  | 112h |
| 27 | 4.1 | ROS2最小节点链路：任务事件 → 速度命令 → 状态回传 | 4d | 2026-06-08 | 2026-06-11 | 戎择辰 [60%]; 戴鹏林 [30%]; 曹鸿治 [10%] | 32h |
| 28 | 4.2 | 摄像头桌面验收初版：导线/纸张/设备占位规则 | 5d | 2026-06-08 | 2026-06-12 | 戎择辰 [70%]; 曹鸿治 [30%] | 40h |
| 29 | 4.3 | 热隐患演示方案：热成像到货则接入，未到货则先用模拟事件 | 4d | 2026-06-10 | 2026-06-15 | 戴鹏林 [40%]; 戎择辰 [40%]; 曹鸿治 [20%] | 32h |
| 30 | 4.4 | 设备/耗材定位数据库：柜-层-盒/桌号查询 | 3d | 2026-06-11 | 2026-06-15 | 曹鸿治 [40%]; 戎择辰 [40%]; 戴鹏林 [20%] | 24h |
| 31 | 4.5 | 云台/激光/语音提醒：缺件时用屏幕文字替代 | 4d | 2026-06-12 | 2026-06-17 | 戴鹏林 [40%]; 戎择辰 [35%]; 曹鸿治 [25%] | 32h |
| 32 | 4.6 | 固定监控模拟告警 → 机器人到点复核闭环 | 4d | 2026-06-16 | 2026-06-19 | 戎择辰 [45%]; 戴鹏林 [35%]; 曹鸿治 [20%] | 32h |
| 33 | 4.7 | 实物接线照片标注与线束整理 | 3d | 2026-06-17 | 2026-06-19 | 曹鸿治 [70%]; 戴鹏林 [20%]; 戎择辰 [10%] | 24h |
| 34 | 5 | **5. 提交前版本冻结：文档、视频、稳定性** | 12d | 2026-06-22 | 2026-07-03 |  | 96h |
| 35 | 5.1 | 稳定性测试：连续运行、断电重启、急停恢复 | 4d | 2026-06-22 | 2026-06-25 | 曹鸿治 [35%]; 戎择辰 [30%]; 戴鹏林 [35%] | 32h |
| 36 | 5.2 | 代码整理：一键运行脚本、配置文件、README | 4d | 2026-06-22 | 2026-06-25 | 戎择辰 [60%]; 戴鹏林 [30%]; 曹鸿治 [10%] | 32h |
| 37 | 5.3 | 技术文档初稿由AI整理，三人按真实结果校对 | 5d | 2026-06-24 | 2026-06-30 | 曹鸿治 [35%]; 戎择辰 [35%]; 戴鹏林 [30%] | 40h |
| 38 | 5.4 | 演示视频脚本与分镜：先讲核心闭环，再讲扩展功能 | 2d | 2026-06-26 | 2026-06-29 | 曹鸿治 [40%]; 戎择辰 [30%]; 戴鹏林 [30%] | 16h |
| 39 | 5.5 | 演示视频拍摄与补录 | 3d | 2026-06-29 | 2026-07-01 | 曹鸿治 [45%]; 戎择辰 [25%]; 戴鹏林 [30%] | 24h |
| 40 | 5.6 | 提交包最终检查：代码、文档、视频、说明 | 2d | 2026-07-02 | 2026-07-03 | 曹鸿治 [30%]; 戎择辰 [40%]; 戴鹏林 [30%] | 16h |
| 41 | 6 | **6. 赛区答辩优化与现场可靠性** | 15d | 2026-07-06 | 2026-07-20 |  | 120h |
| 42 | 6.1 | 答辩PPT：AI生成初稿，人工改成真实工程表达 | 4d | 2026-07-06 | 2026-07-09 | 曹鸿治 [30%]; 戎择辰 [40%]; 戴鹏林 [30%] | 32h |
| 43 | 6.2 | 现场演示故障预案：网络、供电、传感器、底盘失效 | 3d | 2026-07-08 | 2026-07-10 | 曹鸿治 [40%]; 戎择辰 [30%]; 戴鹏林 [30%] | 24h |
| 44 | 6.3 | 三人答辩分工训练 | 5d | 2026-07-13 | 2026-07-17 | 曹鸿治 [33%]; 戎择辰 [34%]; 戴鹏林 [33%] | 40h |
| 45 | 6.4 | 最后一轮结构加固、线束固定、备份卡和备份电源 | 3d | 2026-07-16 | 2026-07-20 | 曹鸿治 [50%]; 戴鹏林 [30%]; 戎择辰 [20%] | 24h |

Notes:
- 26: 【任务类型】阶段 / 【AI可以做】无 / 【人工必须做】无 / 【交付物】阶段汇总
- 27: 【任务类型】AI辅助编码 / 【AI可以做】生成ROS2节点模板和消息定义 / 【人工必须做】人工实机运行、录屏、处理丢包和延迟 / 【交付物】ROS2最小闭环
- 28: 【任务类型】AI辅助算法 / 【AI可以做】生成OpenCV/轻量模型方案和规则判断逻辑 / 【人工必须做】人工采样、验证误判、确定展示样例 / 【交付物】桌面验收Demo
- 29: 【任务类型】AI辅助设计 / 【AI可以做】生成阈值判断和事件结构 / 【人工必须做】人工接传感器或准备替代演示；记录真实限制 / 【交付物】thermal_event_demo
- 30: 【任务类型】AI辅助表格 / 【AI可以做】生成CSV字段和查询接口 / 【人工必须做】人工录入真实位置，准备展示道具 / 【交付物】asset_location.csv
- 31: 【任务类型】AI辅助代码 / 【AI可以做】生成PCA9685/语音播报/屏幕提示代码 / 【人工必须做】人工接线、上电、固定，缺件时明确替代方案 / 【交付物】提醒模块Demo
- 32: 【任务类型】人工联调 / 【AI可以做】提供任务流程脚本和排错建议 / 【人工必须做】真实运行一条完整演示流程并录屏 / 【交付物】核心演示闭环视频
- 33: 【任务类型】AI辅助标注文字 / 【AI可以做】生成图片标注文字和接线说明 / 【人工必须做】人工拍摄清晰照片、贴线号、整理线束 / 【交付物】接线照片包
- 34: 【任务类型】阶段 / 【AI可以做】无 / 【人工必须做】无 / 【交付物】阶段汇总
- 35: 【任务类型】人工必须做 / 【AI可以做】生成测试表和故障分类 / 【人工必须做】现场反复跑，记录每次失败原因 / 【交付物】stability_test_log
- 36: 【任务类型】AI辅助整理 / 【AI可以做】生成README和启动脚本说明 / 【人工必须做】人工逐条执行验证，删除无用代码 / 【交付物】可提交代码包
- 37: 【任务类型】AI适合初稿 / 【AI可以做】根据日志生成系统方案、流程和测试章节 / 【人工必须做】人工补真实照片、参数、失败记录，不写没做成的功能 / 【交付物】技术文档v1
- 38: 【任务类型】AI辅助脚本 / 【AI可以做】生成解说词和镜头列表 / 【人工必须做】人工决定现场顺序、准备道具、避免过度承诺 / 【交付物】video_script.md
- 39: 【任务类型】人工必须做 / 【AI可以做】提供拍摄检查清单和字幕草稿 / 【人工必须做】现场拍摄、确保功能真实可复现 / 【交付物】demo_video素材
- 40: 【任务类型】人工必须做 / 【AI可以做】生成提交清单 / 【人工必须做】三人逐项打开检查，确认文件可用 / 【交付物】final_submission_package
- 41: 【任务类型】阶段 / 【AI可以做】无 / 【人工必须做】无 / 【交付物】阶段汇总
- 42: 【任务类型】AI适合初稿 / 【AI可以做】生成PPT大纲、图示说明、问答预测 / 【人工必须做】人工替换成真实照片、真实数据、真实问题 / 【交付物】答辩PPT v1
- 43: 【任务类型】AI辅助清单 / 【AI可以做】生成故障预案表 / 【人工必须做】人工逐项模拟故障并准备替代演示 / 【交付物】failure_plan.md
- 44: 【任务类型】AI辅助问答 / 【AI可以做】生成评委可能提问 / 【人工必须做】真人限时讲解、互相追问、录音改进 / 【交付物】答辩排练记录
- 45: 【任务类型】人工必须做 / 【AI可以做】提供检查表 / 【人工必须做】实际加固、备份镜像、备件打包 / 【交付物】现场演示包
